# caintegrator_schedule_Aug_30_2011

Schedule from MS Project, 2011-08-01 to 2012-04-17, A marks actual dates.
NIH\NCI

## Calendars

- Standard: Mon-Fri 08:00-12:00, 13:00-17:00; Sat-Sun off.

## Resources

| Resource |
| --- |
| JP |
| TBH |
| SJ/JP |
| Qut |
| Quy |
| SJ |

## Schedule

| ID | WBS | Task | Type | Duration | Start | Finish | Predecessors | Complete | Remaining | Total slack | Free slack | Constraint | Resources | Work | Actual work |
| --- | --- | --- | --- | --- | --- | --- | --- | --- | --- | --- | --- | --- | --- | --- | --- |
| 1 | 1 | **Adhoc Generic Support** |  | 16d | 2011-08-01 | 2011-08-22 |  |  |  | 171d |  |  |  |  |  |
| 2 | 1.1 | TCGA Data Support |  | 2d | 2011-08-01 | 2011-08-02 |  |  |  | 187d |  |  |  |  |  |
| 3 | 1.2 | TCGA Data on caIntegrator |  | 4d | 2011-08-17 | 2011-08-22 |  |  |  | 171d |  | start no earlier than 2011-08-17 |  |  |  |
| 4 | 1.3 | MATKC Support | milestone | 0d | 2011-08-01 | 2011-08-01 |  |  |  | 187d |  |  |  |  |  |
| 5 | 2 | **CaIntegrator Version 1.4** |  | 115d? | 2011-08-01 A | 2012-01-06 |  | 7% | 106.96d? | 72d |  |  |  | 800h | 64h |
| 6 | 2.1 | Version 1.4 planning/priortization |  | 2d | 2011-08-01 A | 2011-08-02 A |  | 100% |  |  |  |  |  |  |  |
| 7 | 2.2 | **508 Compliance** |  | 13d | 2011-08-15 A | 2011-08-31 | 6 | 86% | 1.86d | -1d | 0d |  |  | 56h | 48h |
| 8 | 2.2.1 | Common Accenture Profile Dev/QA |  | 1d | 2011-08-15 A | 2011-08-15 A |  | 100% |  |  |  | start no earlier than 2011-08-15 | Quy | 8h | 8h |
| 9 | 2.2.2 | Identify 508 issues to be fixed and create JIRA user story tasks for each on DEV and QA. |  | 3d | 2011-08-22 A | 2011-08-24 A | 8 | 100% |  |  |  |  | JP | 24h | 24h |
| 10 | 2.2.3 | Fix TABLE tag in caBIO search form. |  | 0.5d | 2011-08-29 A | 2011-08-29 A | 9 | 100% |  |  |  |  | JP | 4h | 4h |
| 11 | 2.2.4 | Fix TABLE tag in gene list search form. |  | 0.5d | 2011-08-29 A | 2011-08-29 A | 10 | 100% |  |  |  |  | JP | 4h | 4h |
| 12 | 2.2.5 | Fix ALT tags in caBIO search form |  | 0.5d | 2011-08-30 A | 2011-08-30 A | 11 | 100% |  |  |  |  | JP | 4h | 4h |
| 13 | 2.2.6 | Fix ALT tags in study summary page |  | 0.5d | 2011-08-30 A | 2011-08-30 A | 12 | 100% |  |  |  |  | JP | 4h | 4h |
| 14 | 2.2.7 | Fix TABLE header in registeration page |  | 0.5d | 2011-08-31 | 2011-08-31 | 13 |  |  | -18d | 0d |  | JP | 4h |  |
| 15 | 2.2.8 | Fix TABLE in study summary page. |  | 0.5d | 2011-08-31 | 2011-08-31 | 14 |  |  | -18d | 0d |  | JP | 4h |  |
| 16 | 2.3 | **Tech Stack Upgrade** |  | 40d | 2011-08-03 A | 2011-09-27 | 7 | 10% | 36.19d | 0d |  |  |  | 168h | 16h |
| 17 | 2.3.1 | Planning |  | 2d | 2011-08-03 A | 2011-08-04 A |  | 100% |  |  |  |  | JP | 16h | 16h |
| 18 | 2.3.2 | CI to Jenkins |  | 2d | 2011-09-01 | 2011-09-02 | 17 |  |  | 0d |  |  | JP | 16h |  |
| 19 | 2.3.3 | ANT 1.8 |  | 3d | 2011-09-05 | 2011-09-07 | 18 |  |  | 0d |  |  | JP | 24h |  |
| 20 | 2.3.4 | JBOSS |  | 5d | 2011-09-08 | 2011-09-14 | 19 |  |  | 0d |  |  | JP | 40h |  |
| 21 | 2.3.5 | Upgrade build for Anthill Pro 3 |  | 9d | 2011-09-15 | 2011-09-27 | 20 |  |  | 0d |  |  | JP | 72h |  |
| 22 | 2.4 | **Generic Platform Support** |  | 43d | 2011-09-28 | 2011-11-25 |  |  |  | 0d |  |  |  | 344h |  |
| 23 | 2.4.1 | Create new generic platform model by extending expression platform. |  | 8d | 2011-09-28 | 2011-10-07 | 21 |  |  | 0d |  |  | JP | 64h |  |
| 24 | 2.4.2 | Modify the generic platform loader to accept MAGE-TAB. |  | 5d | 2011-10-10 | 2011-10-14 | 23 |  |  | 0d |  |  | JP | 40h |  |
| 25 | 2.4.3 | Modify the study deployment process to load the new platform data from caArray. |  | 8d | 2011-10-17 | 2011-10-26 | 24 |  |  | 0d |  |  | JP | 64h |  |
| 26 | 2.4.4 | modify front-end analysis tools to show a new title according to platform type. |  | 3d | 2011-10-27 | 2011-10-31 | 25 |  |  | 0d |  |  | JP | 24h |  |
| 27 | 2.4.5 | Modify the Query interface to allow selection of a generic expression data type. |  | 14d | 2011-11-01 | 2011-11-18 | 26 |  |  | 0d |  |  | JP | 112h |  |
| 28 | 2.4.6 | Modify front-end for IGV and heatmap to display a selector for choosing a generic expression data type. |  | 5d | 2011-11-21 | 2011-11-25 | 27 |  |  | 0d |  |  | JP | 40h |  |

| ID | WBS | Task | Duration | Start | Finish | Predecessors | Total slack | Free slack | Constraint | Resources | Work |
| --- | --- | --- | --- | --- | --- | --- | --- | --- | --- | --- | --- |
| 29 | 2.5 | **TRANSCEND Support** | 30d? | 2011-09-19 | 2011-10-28 |  | 112d | 0d |  |  | 232h |
| 30 | 2.5.1 | Gather contacts for TRANSCEND (contract?) | 1d? | 2011-09-19 | 2011-09-19 |  | 112d | 0d | start no earlier than 2011-09-19 |  |  |
| 31 | 2.5.2 | Refine Requirements | 10d | 2011-09-20 | 2011-10-03 | 30 | 112d | 0d |  | SJ | 80h |
| 32 | 2.5.3 | Version control (create shell study) | 14d | 2011-10-04 | 2011-10-21 | 31 | 112d | 0d |  | TBH | 112h |
| 33 | 2.5.4 | Version control (Archive) | 5d | 2011-10-24 | 2011-10-28 | 32 | 112d |  |  | TBH | 40h |
| 34 | 2.6 | QA | 20d | 2011-11-28 | 2011-12-23 | 22 | 0d |  |  |  |  |
| 35 | 2.7 | Documentation | 10d | 2011-10-31 | 2011-11-11 | 29 | 112d |  |  |  |  |
| 36 | 2.8 | Appscan/Stage/Prod release | 10d | 2011-12-26 | 2012-01-06 | 34 | 72d |  |  |  |  |
| 37 | 3 | **CaIntegrator Version 1.5** | 102d? | 2011-11-28 | 2012-04-17 |  | 0d |  |  |  | 640h |
| 38 | 3.1 | Version 1.5 planning/priortization | 2d | 2011-12-26 | 2011-12-27 | 34 | 0d |  |  |  |  |
| 39 | 3.2 | **TRANSCEND Support** | 60d | 2011-12-28 | 2012-03-20 |  | 0d |  |  |  | 640h |
| 40 | 3.2.1 | Permissions | 40d | 2011-12-28 | 2012-02-21 | 38 | 0d |  |  | JP | 320h |
| 41 | 3.2.2 | Automatic Refresh | 20d | 2011-12-28 | 2012-01-24 | 38 | 40d |  |  | TBH | 160h |
| 42 | 3.2.3 | Single Sign-on | 20d | 2012-02-22 | 2012-03-20 | 40 | 0d |  |  | TBH | 160h |
| 43 | 3.3 | QA | 20d | 2012-03-21 | 2012-04-17 | 39 | 0d |  |  |  |  |
| 44 | 3.4 | Documentation | 10d | 2012-03-21 | 2012-04-03 | 39 | 0d |  |  |  |  |
| 45 | 3.5 | Appscan/Stage/Prod release | 10d | 2012-04-04 | 2012-04-17 | 44 | 0d |  |  |  |  |
